# ERP

Schedule from ProjectLibre, 2021-11-26 to 2022-06-13.

## Calendars

- Padrão: Mon-Fri 08:00-12:00, 13:00-17:00; Sat-Sun off. Exceptions (off unless hours are given): 2021-12-23 to 2021-12-24, 2021-12-30 to 2021-12-31.

## Resources

| Resource | Group | Rate | Cost per use |
| --- | --- | --- | --- |
| Não atribuído |  |  |  |
| Jessika Araujo | Dev | 30 |  |
| Juliana Teixeira | Dev | 30 |  |
| Marcos Felipe | Desig | 30 |  |
| João Vitor | Dev | 10 |  |
| Ana Gabriela | Analista | 29 |  |
| Project Owner |  |  |  |
| Servidor |  | 367 |  |
| aluguel da sala |  | 500 | 300 |
| comida |  | 200 |  |
| Sam smith |  |  |  |
| Eliza coper |  |  |  |
| Dean wincherter |  |  |  |
| Figma |  | 90 |  |
| Photoshop |  | 80 |  |

## Schedule

| ID | WBS | Task | Duration | Start | Finish | Predecessors | Complete | Baseline start | Baseline finish | Constraint | Resources |
| --- | --- | --- | --- | --- | --- | --- | --- | --- | --- | --- | --- |
| 1 | 1 | **Projeto Todo** | 139.12d | 2021-11-26 | 2022-06-13 |  | 51% | 2021-11-26 | 2022-06-13 |  |  |
| 2 | 1.1 | Inicio do Projeto | 0d | 2021-11-26 | 2021-11-26 |  | 100% | 2021-11-26 | 2021-11-26 |  | Servidor; aluguel da sala; comida; Figma; Photoshop |
| 3 | 1.2 | Brainstorm | 2d | 2021-11-26 | 2021-11-29 |  | 100% | 2021-11-26 | 2021-11-29 |  | Project Owner [50%]; Juliana Teixeira [50%]; Jessika Araujo [50%]; Ana Gabriela [50%]; Marcos Felipe [50%]; João Vitor [50%] |
| 5 | 1.3 | **Requisitos** | 8d | 2021-11-30 | 2021-12-10 |  | 100% | 2021-11-30 | 2021-12-09 |  |  |
| 6 | 1.3.1 | Coleta de requisitos | 5d | 2021-11-30 | 2021-12-06 | 3 | 100% | 2021-11-30 | 2021-12-06 | finish no earlier than 2021-12-06 | Project Owner |
| 7 | 1.3.2 | Analise de requisitos | 3d | 2021-12-02 | 2021-12-06 | 6SS+2d | 100% | 2021-12-02 | 2021-12-06 |  | Ana Gabriela [150%] |
| 8 | 1.3.3 | Validação de requisitos | 2d | 2021-12-08 | 2021-12-09 | 7SS | 100% | 2021-12-08 | 2021-12-09 | start no earlier than 2021-12-08 | Jessika Araujo [50%]; Juliana Teixeira [50%]; Project Owner [50%]; Ana Gabriela [50%] |
| 9 | 1.3.4 | Fim da validação dos requisitos | 0d | 2021-12-10 | 2021-12-10 | 8 | 100% | 2021-12-09 | 2021-12-09 |  |  |
| 11 | 1.4 | **Analise e Projeto** | 15d | 2021-12-10 | 2022-01-04 |  | 100% | 2021-12-10 | 2022-01-03 |  |  |
| 12 | 1.4.1 | Gerencia de Requisitos | 5d | 2021-12-10 | 2021-12-16 | 8 | 100% | 2021-12-10 | 2021-12-16 | start no earlier than 2021-12-09 | Ana Gabriela |
| 13 | 1.4.2 | Gerencia de Atividades | 5d | 2021-12-17 | 2021-12-23 | 12 | 100% | 2021-12-17 | 2021-12-23 |  | Ana Gabriela |
| 14 | 1.4.3 | Gerencia de Recursos | 5d | 2021-12-27 | 2022-01-03 | 13 | 100% | 2021-12-27 | 2022-01-03 | start no earlier than 2021-12-24 | Ana Gabriela |
| 15 | 1.4.4 | Fim da Analise do Projeto | 0d | 2022-01-04 | 2022-01-04 | 14 | 100% | 2022-01-03 | 2022-01-03 |  |  |
| 17 | 1.5 | **Prototipação** | 23d | 2022-01-04 | 2022-02-04 |  | 100% | 2022-01-04 | 2022-02-03 |  |  |
| 18 | 1.5.1 | Criação da tela principal | 3d | 2022-01-04 | 2022-01-06 | 15 | 100% | 2022-01-04 | 2022-01-06 |  | Marcos Felipe; Juliana Teixeira |
| 19 | 1.5.2 | **Criação da tela de cadastros** | 4d | 2022-01-07 | 2022-01-12 |  | 100% | 2022-01-07 | 2022-01-12 |  |  |
| 20 | 1.5.2.1 | cadastro dos clientes e fornecedores | 3d | 2022-01-07 | 2022-01-11 | 18 | 100% | 2022-01-07 | 2022-01-11 |  | Jessika Araujo [50%]; João Vitor [50%] |
| 21 | 1.5.2.2 | cadastro dos produtos | 2d | 2022-01-07 | 2022-01-10 | 20SS | 100% | 2022-01-07 | 2022-01-10 |  | Juliana Teixeira |
| 22 | 1.5.2.3 | Cadastro dos Vendedores | 2d | 2022-01-11 | 2022-01-12 | 21 | 100% | 2022-01-11 | 2022-01-12 |  | João Vitor |
| 23 | 1.5.2.4 | Cadastro das Listas de preços | 2d | 2022-01-11 | 2022-01-12 | 22SS | 100% | 2022-01-11 | 2022-01-12 |  | Jessika Araujo |
| 24 | 1.5.3 | **Criação da tela de suprimentos** | 2d | 2022-01-11 | 2022-01-12 |  | 100% | 2022-01-11 | 2022-01-12 |  |  |
| 25 | 1.5.3.1 | Tela de notas de compra | 2d | 2022-01-11 | 2022-01-12 | 23SS | 100% | 2022-01-11 | 2022-01-12 |  | Juliana Teixeira |
| 26 | 1.5.4 | **Criação da tela de vendas** | 5d | 2022-01-13 | 2022-01-19 |  | 100% | 2022-01-13 | 2022-01-19 |  |  |
| 27 | 1.5.4.1 | tela de notas fiscais | 3d | 2022-01-13 | 2022-01-17 | 25 | 100% | 2022-01-13 | 2022-01-17 |  | Jessika Araujo [33.33%]; Juliana Teixeira [33.33%]; João Vitor [50%] |
| 28 | 1.5.4.2 | tela de pedidos de venda | 3d | 2022-01-17 | 2022-01-19 | 27SS+2d | 100% | 2022-01-17 | 2022-01-19 |  | Juliana Teixeira [50%]; Jessika Araujo [50%] |

Notes:
- 8: Será dado um dia, só para a validação
- 11: As Gerencias terão que esperar a finalização de uma para começar a outra ,afim de não sobrecarregar o recurso

| ID | WBS | Task | Duration | Start | Finish | Predecessors | Complete | Baseline start | Baseline finish | Resources |
| --- | --- | --- | --- | --- | --- | --- | --- | --- | --- | --- |
| 29 | 1.5.5 | **Criação da tela do financeiro** | 7d | 2022-01-17 | 2022-01-25 |  | 100% | 2022-01-17 | 2022-01-25 |  |
| 30 | 1.5.5.1 | Tela de contas | 3d | 2022-01-17 | 2022-01-19 | 28SS | 100% | 2022-01-17 | 2022-01-19 | João Vitor |
| 31 | 1.5.5.2 | Tela de extrato | 1d | 2022-01-20 | 2022-01-20 | 30 | 100% | 2022-01-20 | 2022-01-20 | Juliana Teixeira |
| 32 | 1.5.5.3 | Tela de Contas a pagar | 2d | 2022-01-20 | 2022-01-21 | 31SS | 100% | 2022-01-20 | 2022-01-21 | Jessika Araujo |
| 33 | 1.5.5.4 | Tela de contas a receber | 3d | 2022-01-21 | 2022-01-25 | 32SS+1d | 100% | 2022-01-21 | 2022-01-25 | João Vitor |
| 34 | 1.5.6 | **Relatórios** | 10d | 2022-01-21 | 2022-02-03 |  | 100% | 2022-01-21 | 2022-02-03 |  |
| 35 | 1.5.6.1 | **Relatorio de Vendas** | 4d | 2022-01-21 | 2022-01-26 |  | 100% | 2022-01-21 | 2022-01-26 |  |
| 36 | 1.5.6.1.1 | Tela de vendas | 1d | 2022-01-21 | 2022-01-21 | 33SS | 100% | 2022-01-21 | 2022-01-21 | Jessika Araujo |
| 37 | 1.5.6.1.2 | Tela de Evolução do faturamento | 2d | 2022-01-24 | 2022-01-25 | 36 | 100% | 2022-01-24 | 2022-01-25 | Jessika Araujo |
| 38 | 1.5.6.1.3 | Tela de Nfs de saída | 1d | 2022-01-26 | 2022-01-26 | 37 | 100% | 2022-01-26 | 2022-01-26 | João Vitor |
| 39 | 1.5.6.2 | **Relatorio de Estoque** | 1d | 2022-01-27 | 2022-01-27 |  | 100% | 2022-01-27 | 2022-01-27 |  |
| 40 | 1.5.6.2.1 | Tela de Giro de Estoque | 1d | 2022-01-27 | 2022-01-27 | 38 | 100% | 2022-01-27 | 2022-01-27 | Juliana Teixeira |
| 41 | 1.5.6.2.2 | Tela de Entrada e saída de Estoque | 1d | 2022-01-27 | 2022-01-27 | 40SS | 100% | 2022-01-27 | 2022-01-27 | Jessika Araujo [50%]; João Vitor |
| 42 | 1.5.6.3 | **Relatorios do financeiro** | 5d | 2022-01-28 | 2022-02-03 |  | 100% | 2022-01-28 | 2022-02-03 |  |
| 43 | 1.5.6.3.1 | Tela de fluxo de caixa diario e mensal | 3d | 2022-01-28 | 2022-02-01 | 41 | 100% | 2022-01-28 | 2022-02-01 | Juliana Teixeira [50%]; Jessika Araujo |
| 44 | 1.5.6.3.2 | Tela de posições de contas | 2d | 2022-01-28 | 2022-01-31 | 43SS | 100% | 2022-01-28 | 2022-01-31 | João Vitor |
| 45 | 1.5.6.3.3 | Tela de analise de pagamentos | 1d | 2022-02-02 | 2022-02-02 | 44FS+1d | 100% | 2022-02-02 | 2022-02-02 | Jessika Araujo [50%] |
| 46 | 1.5.6.3.4 | Tela de analise de recebimentos | 2d | 2022-02-02 | 2022-02-03 | 45SS | 100% | 2022-02-02 | 2022-02-03 | Juliana Teixeira [50%] |
| 47 | 1.5.7 | Reunião para aprovação do protótipo | 0d | 2022-02-04 | 2022-02-04 | 46 | 100% | 2022-02-03 | 2022-02-03 | Project Owner; Ana Gabriela |
| 48 | 1.5.8 | Fim da prototipagem | 0d | 2022-02-04 | 2022-02-04 | 47 | 100% | 2022-02-03 | 2022-02-03 |  |
| 50 | 1.6 | **Implementação** | 82d | 2022-02-04 | 2022-05-30 |  | 28% | 2022-02-04 | 2022-05-30 |  |
| 51 | 1.6.1 | Estruturação do ambiente | 5d | 2022-02-04 | 2022-02-10 | 48 | 100% | 2022-02-04 | 2022-02-10 | Jessika Araujo; Juliana Teixeira |
| 52 | 1.6.2 | Criação do banco de dados | 7d | 2022-02-11 | 2022-02-21 | 51 | 100% | 2022-02-11 | 2022-02-17 | Jessika Araujo [50%] |
| 53 | 1.6.3 | Criação da tela principal | 4d | 2022-02-11 | 2022-02-16 | 52SS | 100% | 2022-02-11 | 2022-02-16 | Juliana Teixeira [50%] |

Notes:
- 47: Reunião para aprovação do projeto
- 52: Aumento do prazo do banco de dados devido a problemas no servidor

| ID | WBS | Task | Duration | Start | Finish | Predecessors | Complete | Baseline start | Baseline finish | Constraint | Resources |
| --- | --- | --- | --- | --- | --- | --- | --- | --- | --- | --- | --- |
| 54 | 1.6.4 | **Criação da tela de cadastros** | 9d | 2022-02-17 | 2022-03-01 |  | 100% | 2022-02-17 | 2022-03-09 |  |  |
| 55 | 1.6.4.1 | cadastro dos clientes e fornecedores | 2d | 2022-02-17 | 2022-02-18 | 53 | 100% | 2022-02-17 | 2022-02-23 |  | João Vitor |
| 56 | 1.6.4.2 | cadastro dos produtos | 2d | 2022-02-17 | 2022-02-18 | 55SS | 100% | 2022-02-17 | 2022-02-23 |  | Juliana Teixeira [50%] |
| 57 | 1.6.4.3 | Cadastro dos Vendedores | 5d | 2022-02-21 | 2022-02-25 | 56 | 100% | 2022-02-24 | 2022-03-02 |  | Jessika Araujo [50%]; João Vitor |
| 58 | 1.6.4.4 | Cadastro das Listas de preços | 2d | 2022-02-28 | 2022-03-01 | 57 | 100% | 2022-03-03 | 2022-03-09 |  | Juliana Teixeira |
| 59 | 1.6.5 | **Criação da tela de suprimentos** | 5d | 2022-02-28 | 2022-03-04 |  | 100% | 2022-03-03 | 2022-03-09 |  |  |
| 60 | 1.6.5.1 | Tela de notas de compra | 5d | 2022-02-28 | 2022-03-04 | 58SS | 100% | 2022-03-03 | 2022-03-09 |  | João Vitor [50%] |
| 61 | 1.6.6 | **Criação da tela de vendas** | 5d | 2022-03-07 | 2022-03-11 |  |  | 2022-03-10 | 2022-03-14 |  |  |
| 62 | 1.6.6.1 | tela de notas fiscais | 5d | 2022-03-07 | 2022-03-11 | 60 |  | 2022-03-10 | 2022-03-14 |  | Jessika Araujo [50%]; Juliana Teixeira [50%] |
| 63 | 1.6.6.2 | tela de pedidos de venda | 3d | 2022-03-08 | 2022-03-10 | 62SS |  | 2022-03-10 | 2022-03-14 | start no earlier than 2022-03-08 | João Vitor; Juliana Teixeira [50%] |
| 64 | 1.6.7 | **Criação da tela do financeiro** | 15d | 2022-03-14 | 2022-04-01 |  |  | 2022-03-16 | 2022-04-05 |  |  |
| 65 | 1.6.7.1 | Tela de contas | 4d | 2022-03-14 | 2022-03-17 | 63FS+1d |  | 2022-03-16 | 2022-03-21 |  | Jessika Araujo |
| 66 | 1.6.7.2 | Tela de extrato | 2d | 2022-03-18 | 2022-03-21 | 65 |  | 2022-03-22 | 2022-03-23 |  | Juliana Teixeira |
| 67 | 1.6.7.3 | Tela de Contas a pagar | 3d | 2022-03-18 | 2022-03-22 | 66SS |  | 2022-03-22 | 2022-03-24 |  | João Vitor [50%]; Jessika Araujo [50%] |
| 68 | 1.6.7.4 | Tela de contas a receber | 3d | 2022-03-23 | 2022-03-25 | 67 |  | 2022-03-25 | 2022-03-29 |  | Juliana Teixeira [50%]; João Vitor [50%] |
| 69 | 1.6.7.5 | Criação da tela de relatorios | 5d | 2022-03-28 | 2022-04-01 | 68 |  | 2022-03-30 | 2022-04-05 |  | Jessika Araujo |
| 70 | 1.6.8 | **Relatórios** | 24d | 2022-04-05 | 2022-05-06 |  |  | 2022-04-07 | 2022-05-10 |  |  |
| 71 | 1.6.8.1 | **Relatorio de Vendas** | 7d | 2022-04-05 | 2022-04-13 |  |  | 2022-04-07 | 2022-04-15 |  |  |
| 72 | 1.6.8.1.1 | Tela de vendas | 3d | 2022-04-05 | 2022-04-07 | 69FS+1d |  | 2022-04-07 | 2022-04-11 |  | Juliana Teixeira |
| 73 | 1.6.8.1.2 | Tela de Evolução do faturamento | 2d | 2022-04-11 | 2022-04-12 | 72FS+1d |  | 2022-04-13 | 2022-04-14 |  | Jessika Araujo |
| 74 | 1.6.8.1.3 | Tela de Nfs de saída | 3d | 2022-04-11 | 2022-04-13 | 73SS |  | 2022-04-13 | 2022-04-15 |  | João Vitor |
| 75 | 1.6.8.2 | **Relatorio de Estoque** | 6d | 2022-04-11 | 2022-04-18 |  |  | 2022-04-13 | 2022-04-20 |  |  |
| 76 | 1.6.8.2.1 | Tela de Giro de Estoque | 3d | 2022-04-11 | 2022-04-13 | 74SS |  | 2022-04-13 | 2022-04-15 |  | Juliana Teixeira |
| 77 | 1.6.8.2.2 | Tela de Entrada e saída de Estoque | 3d | 2022-04-14 | 2022-04-18 | 76 |  | 2022-04-18 | 2022-04-20 |  | Jessika Araujo; João Vitor |

Notes:
- 54: Tarefa adiantada devido ao estagiario estar inspirado (???)
- 62: Atrasou devido a falha com a conexão com a SEFA
- 63: começou atrasada devido a Juliana precisar se dedicar a tarefa anterior que atrasou

| ID | WBS | Task | Duration | Start | Finish | Predecessors | Baseline start | Baseline finish | Constraint | Deadline | Resources |
| --- | --- | --- | --- | --- | --- | --- | --- | --- | --- | --- | --- |
| 78 | 1.6.8.3 | **Relatorios do financeiro** | 13d | 2022-04-20 | 2022-05-06 |  | 2022-04-22 | 2022-05-10 |  |  |  |
| 79 | 1.6.8.3.1 | Tela de fluxo de caixa diario e mensal | 5d | 2022-04-20 | 2022-04-26 | 77FS+1d | 2022-04-22 | 2022-04-28 |  |  | Juliana Teixeira; João Vitor |
| 80 | 1.6.8.3.2 | Tela de posições de contas | 4d | 2022-04-27 | 2022-05-02 | 79 | 2022-04-29 | 2022-05-04 |  |  | Jessika Araujo |
| 81 | 1.6.8.3.3 | Tela de analise de pagamentos | 4d | 2022-04-27 | 2022-05-02 | 80SS | 2022-04-29 | 2022-05-04 |  |  | João Vitor |
| 82 | 1.6.8.3.4 | Tela de analise de recebimentos | 4d | 2022-05-03 | 2022-05-06 | 81 | 2022-05-05 | 2022-05-10 |  |  | Juliana Teixeira |
| 83 | 1.6.9 | **Criação da tela de configurações** | 13d | 2022-05-09 | 2022-05-25 |  | 2022-05-11 | 2022-05-27 |  |  |  |
| 84 | 1.6.9.1 | Dados da empresa | 3d | 2022-05-09 | 2022-05-11 | 82 | 2022-05-11 | 2022-05-13 |  |  | Jessika Araujo [50%] |
| 85 | 1.6.9.2 | Cadastro dos clientes | 3d | 2022-05-09 | 2022-05-11 | 84SS | 2022-05-11 | 2022-05-13 |  |  | Juliana Teixeira [50%] |
| 86 | 1.6.9.3 | Cadastro das categorias | 5d | 2022-05-12 | 2022-05-18 | 85 | 2022-05-16 | 2022-05-20 |  |  | Jessika Araujo [50%]; Juliana Teixeira [50%] |
| 87 | 1.6.9.4 | Tela de configurações do sistema | 5d | 2022-05-19 | 2022-05-25 | 86 | 2022-05-23 | 2022-05-27 |  |  |  |
| 88 | 1.6.10 | Fim da implementação | 0d | 2022-05-30 | 2022-05-30 | 87 | 2022-05-30 | 2022-05-30 | start no earlier than 2022-05-30 |  |  |
| 90 | 1.7 | **Teste dos devs** | 9d | 2022-05-31 | 2022-06-10 |  | 2022-05-31 | 2022-06-10 |  |  |  |
| 91 | 1.7.1 | Testes unitario | 3d | 2022-05-31 | 2022-06-02 | 88 | 2022-05-31 | 2022-06-02 | start no earlier than 2022-02-02 |  | Jessika Araujo [50%]; Juliana Teixeira [50%] |
| 92 | 1.7.2 | Teste de integração | 3d | 2022-06-03 | 2022-06-07 | 91 | 2022-06-03 | 2022-06-07 |  |  | Jessika Araujo [50%]; Juliana Teixeira |
| 93 | 1.7.3 | Teste de sistema | 3d | 2022-06-08 | 2022-06-10 | 92 | 2022-06-08 | 2022-06-10 |  |  | Jessika Araujo [50%]; Juliana Teixeira |
| 94 | 1.7.4 | Fim dos Testes | 0d | 2022-06-10 | 2022-06-10 | 93 | 2022-06-10 | 2022-06-10 | start no earlier than 2022-02-28 |  |  |
| 96 | 1.8 | **Teste do grupo de PO** | 9d | 2022-02-17 | 2022-03-01 |  | 2022-02-17 | 2022-03-01 |  |  |  |
| 97 | 1.8.1 | Testes unitario | 5d | 2022-02-17 | 2022-02-21 | 55 | 2022-02-17 | 2022-02-21 | must start on 2022-02-17 |  | Sam smith; Eliza coper; Dean wincherter |
| 98 | 1.8.2 | Teste de integração | 3d | 2022-02-22 | 2022-02-24 | 97 | 2022-02-22 | 2022-02-24 | start no earlier than 2022-02-07 |  | Sam smith; Eliza coper; Dean wincherter |
| 99 | 1.8.3 | Teste de sistema | 3d | 2022-02-25 | 2022-03-01 | 98 | 2022-02-25 | 2022-03-01 | start no earlier than 2022-02-07 |  | Sam smith; Eliza coper; Dean wincherter |
| 100 | 1.8.4 | Fim dos Testes | 0d | 2022-03-01 | 2022-03-01 | 99 | 2022-03-01 | 2022-03-01 | start no earlier than 2022-02-28 |  |  |
| 102 | 1.9 | **Validação** | 0d | 2022-06-13 | 2022-06-13 |  | 2022-06-13 | 2022-06-13 |  |  |  |
| 103 | 1.9.1 | Validação do projeto | 0d | 2022-06-13 | 2022-06-13 | 94 | 2022-06-13 | 2022-06-13 | start no earlier than 2022-06-13 |  | Ana Gabriela; Project Owner |
| 104 | 1.9.2 | Fim do projeto | 0d | 2022-06-13 | 2022-06-13 | 103 | 2022-06-13 | 2022-06-13 |  | 2022-07-04 |  |

Notes:
- 84: encurtado o tempo para o cadastro dos dados da empresa
- 85: encurtado o tempo para o cadastro dos dados dos usuarios
- 86: Alocado Jessika e Juliana a tarefa de cadastro de categorias durante 3 dias
- 88: mundança da finalização por sobreposição de tarefas
- 90: Colocado que Jessika e Juliana farão os 1° testes do sistema
- 94: fim dos teste modificado pra condizer com a finalização dos testes do grupo de PO
- 96: Segundo teste com a equipe especializada em testes, sendo responsaveis por eles, o PO; Os testes terão inicio junto com os testes dos devs
- 97: Iniciar testes com a Equipe afim de ganhar tempo
- 103: A VALIDAÇÃO DO PROJETO SERÁ PELA A ANALISTA DO SISTEMA E O po
